# HRM Detail Plan

Schedule from MS Project, 2011-09-27 to 2012-05-29, status date 2012-03-09.

## Calendars

- HRM_hk1.0: Mon off; Tue 08:00-11:00, 13:00-16:00, 19:00-21:00; Wed 13:00-15:30, 19:00-21:00; Thu 08:00-11:00, 13:00-16:00, 19:00-21:00; Fri 13:00-17:00, 19:00-21:00; Sat 08:00-11:00, 13:00-15:30, 19:00-21:00; Sun off.
- HRM_hk2.0: Mon 19:00-21:00; Tue-Wed 08:00-11:00, 13:00-16:00, 19:00-21:00; Thu 19:00-21:00; Fri-Sat 08:00-11:00, 13:00-16:00, 19:00-21:00; Sun off.

## Resources

| Resource |
| --- |
| Nhung |
| Quyet |
| Nguyen |
| Loc |
| Dang |
| Tung |
| Tuong |
| Tan |
| 143 |

## Schedule

| ID | WBS | Task | Duration | Start | Finish | Predecessors | Baseline start | Baseline finish | Baseline duration | Baseline 1 start | Baseline 1 finish | Total slack | Free slack | Constraint | Resources | Work |
| --- | --- | --- | --- | --- | --- | --- | --- | --- | --- | --- | --- | --- | --- | --- | --- | --- |
| 1 | 1 | **Human Resource Management** | 149.25d? | 2011-09-27 | 2012-05-29 |  | 2011-09-22 | 2012-04-30 | 222d? | 2011-09-26 | 2012-04-30 | 0d |  |  |  | 4124.71h |
| 2 | 1.1 | Kick off meeting | 1d | 2011-09-27 | 2011-09-28 |  |  |  |  | 2011-09-27 | 2011-09-27 | 2.56d | 0d | start no earlier than 2011-09-27 | Dang; Loc; Nguyen; Nhung; Quyet; Tan; Tung; Tuong | 64h |
| 3 | 1.2 | **Start Up** | 2.75d? | 2011-09-28 | 2011-10-01 | 2 | 2011-09-22 | 2012-04-17 | 209d? | 2011-09-28 | 2011-09-30 | 2.56d | 0.25d |  |  | 118h |
| 4 | 1.2.1 | **Research process** | 1.5d | 2011-09-28 | 2011-09-30 | 2 | 2011-10-01 | 2012-03-22 | 174d | 2011-09-28 | 2011-09-29 | 2.56d |  |  |  | 58h |
| 5 | 1.2.1.1 | **Requirement Process** | 1.5d | 2011-09-28 | 2011-09-30 | 2 |  |  |  | 2011-09-28 | 2011-09-29 | 2.56d | 0d |  |  | 16h |
| 6 | 1.2.1.1.1 | Research phases in process | 1d | 2011-09-28 | 2011-09-30 | 2 |  |  |  |  |  | 2.56d | 0d |  | Nguyen | 8h |
| 7 | 1.2.1.1.2 | Research tool and document templates | 1d | 2011-09-28 | 2011-09-30 | 2 |  |  |  |  |  | 2.56d | 0d |  | Quyet | 8h |
| 8 | 1.2.1.2 | **Architect process** | 1.5d | 2011-09-28 | 2011-09-30 | 2 |  |  |  | 2011-09-28 | 2011-09-29 | 2.56d | 0d |  |  | 16h |
| 9 | 1.2.1.2.1 | Research phases in process | 1d | 2011-09-28 | 2011-09-30 | 2 |  |  |  |  |  | 2.56d | 0d |  | Tuong | 8h |
| 10 | 1.2.1.2.2 | Research tool and document templates | 1d | 2011-09-28 | 2011-09-30 | 2 |  |  |  |  |  | 2.56d | 0d |  | Tan | 8h |
| 11 | 1.2.1.3 | **Detail design process** | 1.5d | 2011-09-28 | 2011-09-30 | 2 |  |  |  | 2011-09-28 | 2011-09-29 | 2.56d | 0d |  |  | 16h |
| 12 | 1.2.1.3.1 | Research phases in process | 1d | 2011-09-28 | 2011-09-30 | 2 |  |  |  |  |  | 2.56d | 0d |  | Dang | 8h |
| 13 | 1.2.1.3.2 | Research tool and document templates | 1d | 2011-09-28 | 2011-09-30 | 2 |  |  |  |  |  | 2.56d | 0d |  | Loc | 8h |
| 14 | 1.2.1.4 | Testing process | 1d | 2011-09-28 | 2011-09-30 | 2 |  |  |  | 2011-09-28 | 2011-09-28 | 2.56d | 0d |  | Tung | 4h |
| 15 | 1.2.1.5 | Research Process Management: Risk, Measure, Change | 1d | 2011-09-28 | 2011-09-30 | 2 |  |  |  | 2011-09-28 | 2011-09-28 | 2.56d | 0d |  | Nhung | 6h |
| 16 | 1.2.2 | **Develop Project Plan** | 1.25d? | 2011-09-30 | 2011-10-01 | 5, 8, 11, 14, 15 | 2011-09-22 | 2011-09-26 | 5d | 2011-09-28 | 2011-09-29 | 2.56d |  |  |  | 60h |
| 17 | 1.2.2.1 | **Requirement Process** | 1.25d | 2011-09-30 | 2011-10-01 | 5 |  |  |  | 2011-09-28 | 2011-09-29 | 2.56d |  |  |  | 16h |
| 18 | 1.2.2.1.1 | Draw process | 1d | 2011-09-30 | 2011-10-01 | 7 |  |  |  |  |  | 2.56d |  |  | Quyet | 8h |
| 19 | 1.2.2.1.2 | Describe stage in process | 1d | 2011-09-30 | 2011-10-01 | 6 |  |  |  |  |  | 2.56d |  |  | Nguyen | 8h |
| 20 | 1.2.2.2 | **Architect process** | 1.25d | 2011-09-30 | 2011-10-01 | 8 |  |  |  | 2011-09-28 | 2011-09-29 | 2.56d |  |  |  | 16h |
| 21 | 1.2.2.2.1 | Draw process | 1d | 2011-09-30 | 2011-10-01 | 9 |  |  |  |  |  | 2.56d |  |  | Tuong | 8h |
| 22 | 1.2.2.2.2 | Describe stage in process | 1d | 2011-09-30 | 2011-10-01 | 10 |  |  |  |  |  | 2.56d |  |  | Tan | 8h |
| 23 | 1.2.2.3 | **Detail design process** | 1.25d | 2011-09-30 | 2011-10-01 | 11 |  |  |  | 2011-09-28 | 2011-09-29 | 2.56d |  |  |  | 16h |
| 24 | 1.2.2.3.1 | Draw process | 1d | 2011-09-30 | 2011-10-01 | 13 |  |  |  |  |  | 2.56d |  |  | Loc | 8h |
| 25 | 1.2.2.3.2 | Describe stage in process | 1d | 2011-09-30 | 2011-10-01 | 12 |  |  |  |  |  | 2.56d |  |  | Dang | 8h |
| 26 | 1.2.2.4 | Testing process | 1d | 2011-09-30 | 2011-10-01 | 14 |  |  |  | 2011-09-28 | 2011-09-28 | 2.56d |  |  | Tung | 4h |
| 27 | 1.2.2.5 | Doc Process Management: Risk, Measurement, Change | 1d? | 2011-09-30 | 2011-10-01 | 15 |  |  |  | 2011-09-28 | 2011-09-28 | 2.56d |  |  | Nhung | 8h |

| ID | WBS | Task | Duration | Start | Finish | Predecessors | Baseline start | Baseline finish | Baseline duration | Baseline 1 start | Baseline 1 finish | Total slack | Free slack | Resources | Work |
| --- | --- | --- | --- | --- | --- | --- | --- | --- | --- | --- | --- | --- | --- | --- | --- |
| 28 | 1.3 | **Requirement Analysis** | 68.56d? | 2011-10-04 | 2012-01-24 | 3 | 2011-10-01 | 2011-11-20 | 51d? | 2011-10-01 | 2011-12-29 | 2.56d | 0d |  | 1397.5h |
| 29 | 1.3.1 | **Conference with cus 1** | 2.31d? | 2011-10-04 | 2011-10-06 | 3 |  |  |  |  |  | 2.56d |  |  | 57h |
| 30 | 1.3.1.1 | **Prepare 1** | 0.38d? | 2011-10-04 | 2011-10-04 | 3 |  |  |  |  |  | 2.56d | 0d |  | 7h |
| 31 | 1.3.1.1.1 | C1: Research HRM processes | 0.25d? | 2011-10-04 | 2011-10-04 | 3 |  |  |  |  |  | 2.56d | 0d | Nguyen | 2h |
| 32 | 1.3.1.1.2 | C1: Research business, role | 0.25d? | 2011-10-04 | 2011-10-04 | 3 |  |  |  |  |  | 2.56d | 0d | Quyet | 2h |
| 33 | 1.3.1.1.3 | C1: Prepare questions to ask customer | 0.25d? | 2011-10-04 | 2011-10-04 | 3 |  |  |  |  |  | 2.56d | 0d | Loc | 2h |
| 34 | 1.3.1.1.4 | C1: Send mail for customer | 0.12d? | 2011-10-04 | 2011-10-04 | 31, 32, 33 |  |  |  |  |  | 2.56d |  | Nhung | 1h |
| 35 | 1.3.1.2 | **Elicitate requirement 1** | 0.69d? | 2011-10-04 | 2011-10-05 | 30 | 2011-10-01 | 2011-11-12 | 43d | 2011-10-01 | 2011-12-25 | 2.56d | 0d |  | 28h |
| 36 | 1.3.1.2.1 | C1: Write down meeting 1 | 0.44d? | 2011-10-04 | 2011-10-05 | 30 |  |  |  |  |  | 2.56d |  | Tung | 3.5h |
| 37 | 1.3.1.2.2 | C1: Support write down meeting 1 | 0.44d? | 2011-10-04 | 2011-10-05 | 30 |  |  |  |  |  | 2.56d |  | Tuong | 3.5h |
| 38 | 1.3.1.2.3 | C1: Manage meeting 1 | 0.44d? | 2011-10-04 | 2011-10-05 | 30 |  |  |  |  |  | 2.56d |  | Nguyen | 3.5h |
| 39 | 1.3.1.2.4 | C1: Attending conference 1 | 0.44d? | 2011-10-04 | 2011-10-05 | 30 |  |  |  |  |  | 2.56d |  | Dang; Loc; Nhung; Quyet; Tan | 17.5h |
| 40 | 1.3.1.3 | **Analyze requirement 1** | 1.25d? | 2011-10-05 | 2011-10-06 | 35 | 2011-11-20 | 2011-11-20 | 0d? | 2011-10-01 | 2011-12-25 | 2.56d | 0.25d |  | 22h |
| 41 | 1.3.1.3.1 | C1: Doc ConsOpt: Introduction | 0.25d? | 2011-10-05 | 2011-10-05 | 35 |  |  |  |  |  | 3.56d |  | Loc | 2h |
| 42 | 1.3.1.3.2 | C1: Doc ConsOpt: Current System & Reason for improvement | 0.25d | 2011-10-05 | 2011-10-05 | 35 |  |  |  |  |  | 3.56d |  | Dang | 2h |
| 43 | 1.3.1.3.3 | C1: Doc Qui trinh nghiep vu tong quat | 1d | 2011-10-05 | 2011-10-06 | 35 |  |  |  |  |  | 2.56d |  | Nhung | 8h |
| 44 | 1.3.1.3.4 | C1: Guide doc Concept | 1d? | 2011-10-05 | 2011-10-06 | 35 |  |  |  |  |  | 2.56d |  | Nguyen | 2h |
| 45 | 1.3.1.3.5 | C1: Review document | 1d | 2011-10-05 | 2011-10-06 | 35 |  |  |  |  |  | 2.56d |  | Nguyen | 4h |
| 46 | 1.3.1.3.6 | C1: Fix error in document | 1d | 2011-10-05 | 2011-10-06 | 35 |  |  |  |  |  | 2.56d |  | Quyet | 4h |
| 47 | 1.3.2 | **Conference with cus 2** | 13.5d? | 2011-10-05 | 2011-10-27 | 30 |  |  |  |  |  | 2.56d |  |  | 165h |
| 48 | 1.3.2.1 | **Prepare 2** | 0.62d? | 2011-10-05 | 2011-10-06 | 30, 35 |  |  |  |  |  | 3.19d | 0.88d |  | 5h |
| 49 | 1.3.2.1.1 | C2: Đọc và phân tích biểu mẫu Sơ yếu lí lịch | 0.25d? | 2011-10-05 | 2011-10-05 | 30 |  |  |  |  |  | 3.44d | 0.25d | Quyet | 2h |
| 50 | 1.3.2.1.2 | C2: Thu thập và chuẩn bị các câu hỏi về Tuyển dụng và làm mới HSNS | 0.25d? | 2011-10-05 | 2011-10-05 | 30 |  |  |  |  |  | 3.44d | 0.25d | Nguyen | 2h |
| 51 | 1.3.2.1.3 | C2: Send mail for customer | 0.12d? | 2011-10-06 | 2011-10-06 | 49, 50 |  |  |  |  |  | 3.19d |  | Nhung | 1h |

| ID | WBS | Task | Type | Duration | Start | Finish | Predecessors | Baseline 1 start | Baseline 1 finish | Total slack | Free slack | Constraint | Resources | Work |
| --- | --- | --- | --- | --- | --- | --- | --- | --- | --- | --- | --- | --- | --- | --- |
| 52 | 1.3.2.2 | **Elicitate Requirement 2** |  | 0.5d? | 2011-10-07 | 2011-10-07 | 48, 40 |  |  | 2.31d | 0.25d |  |  | 32h |
| 53 | 1.3.2.2.1 | C2: Write down meeting 2 |  | 0.5d? | 2011-10-07 | 2011-10-07 | 48 |  |  | 2.31d |  |  | Dang | 4h |
| 54 | 1.3.2.2.2 | C2: Support write down meeting 2 |  | 0.5d? | 2011-10-07 | 2011-10-07 | 48 |  |  | 2.31d |  |  | Loc | 4h |
| 55 | 1.3.2.2.3 | C2: Manage meeting 2 |  | 0.5d? | 2011-10-07 | 2011-10-07 | 48 |  |  | 2.31d |  |  | Quyet | 4h |
| 56 | 1.3.2.2.4 | C2: Attending conference 2 |  | 0.5d? | 2011-10-07 | 2011-10-07 |  |  |  | 2.31d |  |  | Nguyen; Nhung; Tan; Tung; Tuong | 20h |
| 57 | 1.3.2.3 | **Analyze requirement** |  | 11.25d | 2011-10-08 | 2011-10-27 | 52 |  |  | 2.56d | 0d |  |  | 128h |
| 58 | 1.3.2.3.1 | C2: Doc Mô hình phân rã chức năng HSNS |  | 4d | 2011-10-08 | 2011-10-18 | 52 |  |  | 2.56d | 0d |  | Dang | 32h |
| 59 | 1.3.2.3.2 | C2: Draw process qui trinh nghiep vu tong quat |  | 2d | 2011-10-08 | 2011-10-13 | 52 |  |  | 2.56d | 0d |  | Nhung | 16h |
| 60 | 1.3.2.3.3 | C2: Phân tích hệ thống dự kiến |  | 4d | 2011-10-08 | 2011-10-18 | 52 |  |  | 2.56d | 0d |  | Nguyen | 32h |
| 61 | 1.3.2.3.4 | C2: Doc Information Catalog: Thông tin chung |  | 2d | 2011-10-13 | 2011-10-18 | 59 |  |  | 2.56d | 0d |  | Nhung | 16h |
| 62 | 1.3.2.3.5 | C2: Review document |  | 2d | 2011-10-18 | 2011-10-21 | 58, 59, 60, 61 |  |  | 2.56d | 0.25d |  | Nguyen | 16h |
| 63 | 1.3.2.3.6 | C2: Fix error in document |  | 2d | 2011-10-22 | 2011-10-27 | 62 |  |  | 2.56d |  |  | Quyet | 16h |
| 64 | 1.3.3 | **Conference with cus 3** |  | 9.38d? | 2011-10-27 | 2011-11-11 |  |  |  | 2.56d | 0.25d |  |  | 193h |
| 65 | 1.3.3.1 | **Prepare 3** |  | 1.62d? | 2011-10-27 | 2011-10-29 | 48, 52, 57 |  |  | 2.56d | 0d |  |  | 25h |
| 66 | 1.3.3.1.1 | C3: Research HRM processes |  | 1d? | 2011-10-27 | 2011-10-28 |  |  |  | 2.56d | 0.25d |  | Nguyen | 8h |
| 67 | 1.3.3.1.2 | C3: Research business, role |  | 1d? | 2011-10-27 | 2011-10-28 |  |  |  | 2.56d | 0.25d |  | Loc | 8h |
| 68 | 1.3.3.1.3 | C3: Prepare questions to ask customer |  | 1d? | 2011-10-27 | 2011-10-28 |  |  |  | 2.56d | 0.25d |  | Quyet | 8h |
| 69 | 1.3.3.1.4 | C3: Send mail for customer |  | 0.12d? | 2011-10-29 | 2011-10-29 | 66, 67, 68 |  |  | 2.56d |  |  | Nhung | 1h |
| 70 | 1.3.3.2 | **Elicitate Requirement 3** |  | 0.5d? | 2011-10-29 | 2011-10-29 | 65, 57 |  |  | 2.56d | 0d |  |  | 32h |
| 71 | 1.3.3.2.1 | C3: Write down meeting 3 |  | 0.5d? | 2011-10-29 | 2011-10-29 |  |  |  | 2.56d |  |  | Nhung | 4h |
| 72 | 1.3.3.2.2 | C3: Support write down meeting 3 |  | 0.5d? | 2011-10-29 | 2011-10-29 |  |  |  | 2.56d |  |  | Tan | 4h |
| 73 | 1.3.3.2.3 | C3: Manage meeting 3 |  | 0.5d? | 2011-10-29 | 2011-10-29 |  |  |  | 2.56d |  |  | Nguyen | 4h |
| 74 | 1.3.3.2.4 | C3: Attending conference 3 |  | 0.5d? | 2011-10-29 | 2011-10-29 |  |  |  | 2.56d |  |  | Dang; Loc; Quyet; Tung; Tuong | 20h |
| 75 | 1.3.3.3 | **Analyze requirement** |  | 7.25d | 2011-10-29 | 2011-11-11 | 70 |  |  | 6.38d |  |  |  | 136h |
| 76 | 1.3.3.3.1 | C3: Doc Information Category: Thông tin mở rộng |  | 2d | 2011-10-29 | 2011-11-04 |  |  |  | 6.12d | 0d |  | Nhung | 16h |
| 77 | 1.3.3.3.2 | C3: Doc Mo hinh phan ra chuc nang HSNS |  | 4d | 2011-10-29 | 2011-11-09 |  |  |  | 21.88d | 0d |  | Dang | 32h |
| 78 | 1.3.3.3.3 | C3: Scenerio |  | 4d | 2011-10-29 | 2011-11-09 |  |  |  | 21.88d | 0d |  | Tung | 32h |
| 79 | 1.3.3.3.4 | C3: Processes |  | 2d | 2011-11-04 | 2011-11-09 | 76 |  |  | 21.88d | 0d |  | Nhung | 16h |
| 80 | 1.3.3.3.5 | C3: Effect |  | 4d | 2011-10-29 | 2011-11-09 |  |  |  | 21.88d | 0d |  | Loc | 32h |
| 81 | 1.3.3.3.6 | C3: Review document |  | 0.5d | 2011-11-09 | 2011-11-10 | 76, 77, 78, 79, 80 |  |  | 21.62d | 0d |  | Nguyen | 4h |
| 82 | 1.3.3.3.7 | C3: Fix error in document |  | 0.5d | 2011-11-10 | 2011-11-11 | 81 |  |  | 21.62d | 0d |  | Quyet | 4h |
| 83 | 1.3.4 | Send Concept Operation to customer | milestone | 0.25d | 2011-11-11 | 2011-11-11 | 77, 78, 79, 80, 81, 82 | 2011-11-10 | 2011-11-10 | 21.88d | 0d | start no earlier than 2011-11-10 | Nhung | 2h |
| 84 | 1.3.5 | C3: Update Information Category |  | 26d | 2011-11-11 | 2012-01-12 | 83 |  |  | 21.62d | 0d |  | Quyet | 202h |
| 85 | 1.3.6 | C3: Update Process |  | 26d | 2011-11-11 | 2012-01-12 | 83 |  |  | 21.62d | 0d |  | Nhung | 206h |
| 86 | 1.3.7 | C3: Review and fix Concept |  | 26d | 2011-11-11 | 2012-01-12 | 83 |  |  | 21.62d | 0d |  | Nguyen | 206h |

| ID | WBS | Task | Duration | Start | Finish | Predecessors | Baseline start | Baseline finish | Baseline duration | Baseline 1 start | Baseline 1 finish | Total slack | Free slack | Resources | Work |
| --- | --- | --- | --- | --- | --- | --- | --- | --- | --- | --- | --- | --- | --- | --- | --- |
| 87 | 1.3.8 | **Conference with cus 4 (review)** | 6.12d? | 2012-01-12 | 2012-01-21 | 83, 70, 64, 84, 85, 86 |  |  |  |  |  | 21.62d | 0d |  | 83h |
| 88 | 1.3.8.1 | **Prepare 4** | 1.12d? | 2012-01-12 | 2012-01-13 | 70, 64 |  |  |  |  |  | 21.62d | 0d |  | 19h |
| 89 | 1.3.8.1.1 | C4: Research HRM processes | 0.75d? | 2012-01-12 | 2012-01-13 |  |  |  |  |  |  | 21.62d | 0d | Nguyen | 6h |
| 90 | 1.3.8.1.2 | C4: Research business, role | 0.75d? | 2012-01-12 | 2012-01-13 |  |  |  |  |  |  | 21.62d | 0d | Loc | 6h |
| 91 | 1.3.8.1.3 | C4: Prepare questions to ask customer | 0.75d? | 2012-01-12 | 2012-01-13 |  |  |  |  |  |  | 21.62d | 0d | Quyet | 6h |
| 92 | 1.3.8.1.4 | C4: Send mail for customer | 0.12d? | 2012-01-13 | 2012-01-13 | 89, 90, 91 |  |  |  |  |  | 21.88d |  | Nhung | 1h |
| 93 | 1.3.8.2 | **Elicitate Requirement 4** | 0.75d? | 2012-01-13 | 2012-01-14 | 88, 83, 75 |  |  |  |  |  | 21.62d | 0d |  | 32h |
| 94 | 1.3.8.2.1 | C4: Write down meeting 4 | 0.5d? | 2012-01-13 | 2012-01-14 |  |  |  |  |  |  | 21.62d |  | Loc | 4h |
| 95 | 1.3.8.2.2 | C4: Support write down meeting 4 | 0.5d? | 2012-01-13 | 2012-01-14 |  |  |  |  |  |  | 21.62d |  | Quyet | 4h |
| 96 | 1.3.8.2.3 | C4: Manage meeting 4 | 0.5d? | 2012-01-13 | 2012-01-14 |  |  |  |  |  |  | 21.62d |  | Nguyen | 4h |
| 97 | 1.3.8.2.4 | C4: Attending conference 4 | 0.5d? | 2012-01-13 | 2012-01-14 |  |  |  |  |  |  | 21.62d |  | Dang; Nhung; Tan; Tung; Tuong | 20h |
| 98 | 1.3.8.3 | **Analyze requirement** | 4.25d? | 2012-01-14 | 2012-01-21 | 93 |  |  |  |  |  | 21.62d |  |  | 32h |
| 99 | 1.3.8.3.1 | Update Information Catgegories | 1d? | 2012-01-14 | 2012-01-17 |  |  |  |  |  |  | 21.62d | 0d | Nhung | 8h |
| 100 | 1.3.8.3.2 | Update Processes | 1d? | 2012-01-14 | 2012-01-17 |  |  |  |  |  |  | 21.62d | 0d | Quyet | 8h |
| 101 | 1.3.8.3.3 | C4: Review document | 1d? | 2012-01-17 | 2012-01-19 | 99, 100 |  |  |  |  |  | 21.88d | 0d | Nguyen | 8h |
| 102 | 1.3.8.3.4 | C4: Fix error in document | 1d? | 2012-01-19 | 2012-01-21 | 101 |  |  |  |  |  | 21.62d |  | Quyet | 8h |
| 103 | 1.3.9 | Update Plan | 1d | 2012-01-21 | 2012-01-24 | 87 |  |  |  |  |  | 21.62d | 0d | Nhung | 8h |
| 104 | 1.3.10 | **Develop SRS** | 40.31d | 2011-11-11 | 2012-01-17 | 64, 83 | 2011-10-23 | 2011-11-20 | 29d | 2011-10-01 | 2011-10-04 | 25.94d | 4.06d |  | 275.5h |
| 105 | 1.3.10.1 | **Document Software Requirement Specification (Draft version)** | 5d | 2011-11-11 | 2011-11-19 |  |  |  |  | 2011-10-01 | 2011-10-03 | 35d |  |  | 79h |
| 106 | 1.3.10.1.1 | **Develop use case specification** | 3.5d | 2011-11-11 | 2011-11-17 |  |  |  |  | 2011-10-01 | 2011-10-03 | 36.5d | 1.5d |  | 60h |
| 107 | 1.3.10.1.1.1 | Draw use cases | 2.5d | 2011-11-11 | 2011-11-17 |  |  |  |  |  |  | 36.5d | 1.5d | Dang | 20h |
| 108 | 1.3.10.1.1.2 | Draw activity diagram for use cases | 2.5d | 2011-11-11 | 2011-11-17 |  |  |  |  |  |  | 36.5d | 1.5d | Loc | 20h |
| 109 | 1.3.10.1.1.3 | Descripe use case | 2.5d | 2011-11-11 | 2011-11-17 |  |  |  |  |  |  | 36.5d | 1.5d | Tung | 20h |
| 110 | 1.3.10.1.2 | Monitoring tasks in SRS | 2.62d | 2011-11-11 | 2011-11-17 |  |  |  |  |  |  | 36.38d | 1.38d | Quyet | 10h |
| 111 | 1.3.10.1.3 | Review SRS | 5.59d | 2011-11-11 | 2011-11-19 |  |  |  |  |  |  | 35d | 0d | Nguyen | 9h |
| 112 | 1.3.10.2 | Review | 0.5d | 2011-11-19 | 2011-11-22 | 106, 111, 107, 108, 109, 110 |  |  |  | 2011-10-01 | 2011-10-01 | 35d | 0d | Dang; Loc; Nguyen; Quyet; Tan; Tung; Tuong | 28h |

| ID | WBS | Task | Duration | Start | Finish | Predecessors | Baseline start | Baseline finish | Baseline duration | Baseline 1 start | Baseline 1 finish | Total slack | Free slack | Constraint | Calendar | Resources | Work |
| --- | --- | --- | --- | --- | --- | --- | --- | --- | --- | --- | --- | --- | --- | --- | --- | --- | --- |
| 113 | 1.3.10.3 | **Update SRS** | 5.75d | 2011-11-22 | 2011-12-01 | 112 |  |  |  |  |  | 35d | 0d |  |  |  | 56.5h |
| 114 | 1.3.10.3.1 | Update use case | 2d | 2011-11-22 | 2011-11-25 |  |  |  |  |  |  | 35d | 0d |  |  | Loc | 16h |
| 115 | 1.3.10.3.2 | Bussiness Rule | 2d | 2011-11-25 | 2011-12-01 | 114 |  |  |  |  |  | 35d |  |  |  | Loc | 16h |
| 116 | 1.3.10.3.3 | Functional Requirement | 2d | 2011-11-22 | 2011-11-25 |  |  |  |  |  |  | 37.75d |  |  |  | Quyet | 10.5h |
| 117 | 1.3.10.3.4 | Software Requirement Specification (Final version) | 2d | 2011-11-22 | 2011-11-25 |  |  |  |  |  |  | 37.75d |  | finish no earlier than 2011-11-01 |  | Dang | 14h |
| 118 | 1.3.10.4 | Develop interfaces | 7d | 2011-12-01 | 2011-12-16 | 113 |  |  |  | 2011-10-01 | 2011-10-02 | 35d | 9.31d | start no earlier than 2011-11-29 |  | Nhung | 56h |
| 119 | 1.3.10.5 | Upadate interfaces | 7d | 2011-12-31 | 2012-01-17 | 118 |  |  |  |  |  | 25.69d |  | finish no earlier than 2012-01-17 |  | Dang | 56h |
| 120 | 1.4 | Update Plan | 1d | 2012-01-24 | 2012-01-26 | 103, 104 |  |  |  |  |  | 74.19d | 0d |  |  | Nhung | 8h |
| 121 | 1.5 | **Architect Design Analysis** | 60.75d | 2011-11-04 | 2012-02-11 | 76 | 2011-10-24 | 2011-12-25 | 63d? | 2011-10-15 | 2011-12-29 | 6.12d | 0d |  |  |  | 688h |
| 122 | 1.5.1 | **Develop architecture driver document (ADD)** | 46.75d | 2011-11-04 | 2012-01-20 |  | 2011-12-25 | 2011-12-25 | 0d? | 2011-10-15 | 2011-12-25 | 6.12d | 0d |  |  |  | 528h |
| 123 | 1.5.1.1 | Discover architecture drivers | 10d | 2011-11-04 | 2011-11-26 |  | 2011-10-24 | 2011-11-03 | 11d | 2011-10-15 | 2011-10-17 | 6.12d | 0d |  |  | Tan; Tuong | 160h |
| 124 | 1.5.1.2 | Document ADD(Draft version) | 10d | 2011-11-26 | 2011-12-21 | 123 | 2011-11-04 | 2011-11-05 | 2d | 2011-10-17 | 2011-10-22 | 6.12d | 0d |  |  | Tan; Tuong | 160h |
| 125 | 1.5.1.3 | Review | 3d | 2011-12-21 | 2011-12-28 | 124 | 2011-11-06 | 2011-11-06 | 1d | 2011-10-22 | 2011-10-24 | 6.12d | 0d |  |  | Tan; Tuong | 48h |
| 126 | 1.5.1.4 | Document ADD(Final version) | 10d | 2011-12-28 | 2012-01-20 | 125 |  |  |  |  |  | 6.12d |  |  |  | Tan; Tuong | 160h |
| 127 | 1.5.2 | **Develop architecture design** | 14d | 2012-01-20 | 2012-02-11 |  | 2011-11-13 | 2011-11-13 | 1d | 2011-10-23 | 2011-12-29 | 6.12d |  |  |  |  | 160h |
| 128 | 1.5.2.1 | Research about new pattern | 2d | 2012-01-20 | 2012-01-25 | 122 | 2011-11-14 | 2011-12-05 | 22d | 2011-10-23 | 2011-11-01 | 6.12d | 0d | finish no earlier than 2011-11-13 |  | Tan; Tuong | 32h |
| 129 | 1.5.2.2 | Document AD (Draft version) | 5d | 2012-01-25 | 2012-02-04 | 128 | 2011-12-06 | 2011-12-06 | 1d | 2011-11-02 | 2011-11-16 | 6.38d | 0d |  |  | Tan; Tuong | 80h |
| 130 | 1.5.2.3 | Review | 1d | 2012-02-04 | 2012-02-08 | 129 | 2011-12-07 | 2011-12-10 | 4d | 2011-11-16 | 2011-11-18 | 6.12d | 0d | finish no earlier than 2011-11-20 |  | Tan; Tuong | 16h |
| 131 | 1.5.2.4 | Document AD (Final version) | 2d | 2012-02-08 | 2012-02-11 | 130 | 2011-12-12 | 2011-12-13 | 2d | 2011-12-19 | 2011-12-24 | 6.38d |  | finish no earlier than 2011-12-31 |  | Tan; Tuong | 32h |
| 132 | 1.6 | Design Database | 7d | 2012-02-11 | 2012-02-29 | 121 | 2011-12-14 | 2011-12-24 | 11d | 2011-11-17 | 2011-12-29 | 6.12d |  |  |  | Tuong | 56h |
| 133 | 1.7 | Update Plan | 1d? | 2012-02-11 | 2012-02-15 | 121, 120 |  |  |  |  |  | 54.56d |  |  |  | Nhung | 8h |
| 134 | 1.8 | **Testing** | 14.06d | 2012-01-24 | 2012-02-15 | 28 |  |  |  |  |  | 12.69d |  |  | HRM_hk2.0 |  | 16h |
| 135 | 1.8.1 | **Design test case** | 14.06d | 2012-01-24 | 2012-02-15 |  |  |  |  |  |  | 12.69d |  |  | HRM_hk2.0 |  | 16h |
| 136 | 1.8.1.1 | Acceptance test case | 1d | 2012-01-24 | 2012-01-27 | 28 |  |  |  |  |  | 23.5d | 9.88d |  | HRM_hk2.0 | Tung | 8h |
| 137 | 1.8.1.2 | System test case | 1d | 2012-02-11 | 2012-02-15 | 121, 136 |  |  |  |  |  | 12.69d | 12.06d |  | HRM_hk2.0 | Tung | 8h |

| ID | WBS | Task | Duration | Start | Finish | Predecessors | Baseline start | Baseline finish | Baseline duration | Baseline 1 start | Baseline 1 finish | Total slack | Free slack | Constraint | Calendar | Resources | Work |
| --- | --- | --- | --- | --- | --- | --- | --- | --- | --- | --- | --- | --- | --- | --- | --- | --- | --- |
| 138 | 1.9 | **Training Code** | 17.81d | 2011-11-03 | 2011-12-02 | 70 | 2012-03-04 | 2012-03-04 | 0d? | 2011-11-28 | 2011-12-29 | 0d |  |  |  |  | 149.21h |
| 139 | 1.9.1 | ID generate | 7d | 2011-11-03 | 2011-12-02 |  | 2012-04-04 | 2012-04-04 | 0d? | 2011-11-28 | 2011-12-15 | 0d |  | finish no earlier than 2011-12-02 |  | Dang; Loc; Nguyen; Nhung; Quyet; Tan [50%]; Tung; Tuong | 149.21h |
| 140 | 1.10 | **Manage Catalog** | 59.25d | 2011-12-03 | 2012-03-09 | 138 |  |  |  |  |  | 0d |  |  |  |  | 175h |
| 141 | 1.10.1 | Programming: Manage Catalog | 40d | 2011-12-03 | 2012-03-06 | 139 |  |  |  |  |  | 0d |  |  |  | Tan [50%] | 159h |
| 142 | 1.10.2 | Test Manage Catalog | 2d | 2012-03-06 | 2012-03-09 | 141, 137 |  |  |  |  |  | 0d |  |  |  | Tung | 16h |
| 143 | 1.11 | **Increment 1: Detail Information Management** | 15.5d? | 2012-03-10 | 2012-04-03 | 140, 138, 132 |  |  |  |  |  | 0d |  |  | HRM_hk2.0 |  | 168h |
| 144 | 1.11.1 | **Detail Information Management** | 7.25d | 2012-03-10 | 2012-03-21 |  |  |  |  |  |  | 0d |  |  | HRM_hk2.0 |  | 40h |
| 145 | 1.11.1.1 | Design Detail Information Management | 2d | 2012-03-10 | 2012-03-14 | 142 |  |  |  |  |  | 0d |  | start no earlier than 2012-02-13 | HRM_hk2.0 | Dang | 16h |
| 146 | 1.11.1.2 | Code Detail Information Management | 2d | 2012-03-14 | 2012-03-20 | 145 |  |  |  |  |  | 0d |  |  | HRM_hk2.0 | Tan | 16h |
| 147 | 1.11.1.3 | Test Detail Information Management | 1d | 2012-03-20 | 2012-03-21 | 146 |  |  |  |  |  | 0d |  |  | HRM_hk2.0 | Nguyen | 8h |
| 148 | 1.11.2 | **Employee Code Setting** | 3.25d | 2012-03-21 | 2012-03-27 |  |  |  |  |  |  | 3.75d | 0d |  | HRM_hk2.0 |  | 16h |
| 149 | 1.11.2.1 | Design Employee Code Setting | 0.5d | 2012-03-21 | 2012-03-23 | 144 |  |  |  |  |  | 3.75d | 0d |  | HRM_hk2.0 | Dang | 4h |
| 150 | 1.11.2.2 | Code Employee Code Setting | 1d | 2012-03-23 | 2012-03-24 | 146, 149 |  |  |  |  |  | 4.25d | 0d |  | HRM_hk2.0 | Tan | 8h |
| 151 | 1.11.2.3 | Test Employee Code Setting | 0.5d | 2012-03-24 | 2012-03-27 | 150 |  |  |  |  |  | 3.75d |  |  | HRM_hk2.0 | Nguyen | 4h |
| 152 | 1.11.3 | **Column Setting** | 2.75d? | 2012-03-23 | 2012-03-27 |  |  |  |  |  |  | 2d | 0d |  | HRM_hk2.0 |  | 16h |
| 153 | 1.11.3.1 | Design Column Setting | 0.5d? | 2012-03-23 | 2012-03-23 | 148SS+1d |  |  |  |  |  | 2d | 0.38d |  | HRM_hk2.0 | Dang | 4h |
| 154 | 1.11.3.2 | Code Column Setting | 1d? | 2012-03-24 | 2012-03-27 | 153 |  |  |  |  |  | 1.5d | 0d |  | HRM_hk2.0 | Tan | 8h |
| 155 | 1.11.3.3 | Test Column Setting | 0.5d? | 2012-03-27 | 2012-03-27 | 154 |  |  |  |  |  | 3.25d |  |  | HRM_hk2.0 | Nguyen | 4h |
| 156 | 1.11.4 | **Certificate Management** | 3.5d | 2012-03-24 | 2012-03-30 |  |  |  |  |  |  | 1.5d | 0.75d |  | HRM_hk2.0 |  | 16h |
| 157 | 1.11.4.1 | Design Certificate Management | 0.5d | 2012-03-24 | 2012-03-24 | 152SS+1d |  |  |  |  |  | 1.5d | 0.25d |  | HRM_hk2.0 | Dang | 4h |
| 158 | 1.11.4.2 | Code Certificate Management | 1d | 2012-03-27 | 2012-03-28 | 154, 157 |  |  |  |  |  | 2d | 0d |  | HRM_hk2.0 | Tan | 8h |
| 159 | 1.11.4.3 | Test Certificate Management | 0.5d | 2012-03-28 | 2012-03-30 | 158 |  |  |  |  |  | 1.5d |  |  | HRM_hk2.0 | Nguyen | 4h |
| 160 | 1.11.5 | **Supported People Management** | 3.25d? | 2012-03-21 | 2012-03-27 |  |  |  |  |  |  | 1d |  |  | HRM_hk2.0 |  | 16h |
| 161 | 1.11.5.1 | Design Supported People Management | 0.5d? | 2012-03-21 | 2012-03-23 | 144 |  |  |  |  |  | 1d | 0d |  | HRM_hk2.0 | Nguyen | 4h |
| 162 | 1.11.5.2 | Code Supported People Management | 1d? | 2012-03-23 | 2012-03-24 | 161 |  |  |  |  |  | 1d | 0d |  | HRM_hk2.0 | Nguyen | 8h |
| 163 | 1.11.5.3 | Test Supported People Management | 0.5d? | 2012-03-24 | 2012-03-27 | 162 |  |  |  |  |  | 1d | 0d |  | HRM_hk2.0 | Dang | 4h |

| ID | WBS | Task | Duration | Start | Finish | Predecessors | Total slack | Free slack | Calendar | Resources | Work |
| --- | --- | --- | --- | --- | --- | --- | --- | --- | --- | --- | --- |
| 164 | 1.11.6 | **Family Relationship Management** | 5.5d? | 2012-03-21 | 2012-03-30 |  | 1.5d | 0.75d | HRM_hk2.0 |  | 28h |
| 165 | 1.11.6.1 | Design Family Relationship Management | 1d | 2012-03-21 | 2012-03-23 | 144 | 2d | 0.38d | HRM_hk2.0 | Nhung | 8h |
| 166 | 1.11.6.2 | Code Family Relationship Management | 2d | 2012-03-24 | 2012-03-28 | 165 | 1.75d | 0d | HRM_hk2.0 | Nhung | 16h |
| 167 | 1.11.6.3 | Test Family Relationship Management | 0.5d? | 2012-03-28 | 2012-03-30 | 166 | 1.5d |  | HRM_hk2.0 | Tung | 4h |
| 168 | 1.11.7 | **Staff History** | 2.75d? | 2012-03-27 | 2012-03-30 |  | 1d | 0.38d | HRM_hk2.0 |  | 16h |
| 169 | 1.11.7.1 | Design Staff History | 0.5d? | 2012-03-27 | 2012-03-27 | 163 | 1d | 0.25d | HRM_hk2.0 | Nguyen | 4h |
| 170 | 1.11.7.2 | Code Staff History | 1d? | 2012-03-28 | 2012-03-30 | 169 | 1d | 0d | HRM_hk2.0 | Nguyen | 8h |
| 171 | 1.11.7.3 | Test Staff History | 0.5d? | 2012-03-30 | 2012-03-30 | 170 | 1d |  | HRM_hk2.0 | Dang | 4h |
| 172 | 1.11.8 | Integrate | 0.5d | 2012-03-31 | 2012-03-31 | 144, 148, 152, 156, 160, 164, 168 | 1.25d | 0d | HRM_hk2.0 | Tan; Nguyen; Nhung | 12h |
| 173 | 1.11.9 | Testing | 1d | 2012-03-31 | 2012-04-03 | 172 | 1d |  | HRM_hk2.0 | Tung; Nguyen [50%] | 8h |
| 174 | 1.12 | **Increment 2: Training Management** | 16.25d? | 2012-03-24 | 2012-04-18 | 144 | 0d |  | HRM_hk2.0 |  | 452h |
| 175 | 1.12.1 | **Reward Management** | 2.75d? | 2012-03-24 | 2012-03-28 |  | 1.5d | 0d | HRM_hk2.0 |  | 16h |
| 176 | 1.12.1.1 | Design Reward Management | 0.5d? | 2012-03-24 | 2012-03-24 | 144FS+2d | 1.5d | 0.25d | HRM_hk2.0 | Tuong | 4h |
| 177 | 1.12.1.2 | Code Reward Management | 1d? | 2012-03-27 | 2012-03-28 | 176 | 1.25d | 0d | HRM_hk2.0 | Tuong | 8h |
| 178 | 1.12.1.3 | Test Reward Management | 0.5d? | 2012-03-28 | 2012-03-28 | 177 | 1.5d |  | HRM_hk2.0 | Loc | 4h |
| 179 | 1.12.2 | **Staff Internship Management** | 2.75d? | 2012-03-24 | 2012-03-28 |  | 4.5d | 1.25d | HRM_hk2.0 |  | 16h |
| 180 | 1.12.2.1 | Design Staff Internship Management | 0.5d? | 2012-03-24 | 2012-03-24 | 144FS+2d | 4.5d | 0.25d | HRM_hk2.0 | Loc | 4h |
| 181 | 1.12.2.2 | Code Staff Internship Management | 1d? | 2012-03-27 | 2012-03-28 | 180 | 4.5d | 0d | HRM_hk2.0 | Loc | 8h |
| 182 | 1.12.2.3 | Test Staff Internship Management | 0.5d? | 2012-03-28 | 2012-03-28 | 181 | 4.5d |  | HRM_hk2.0 | Nhung | 4h |
| 183 | 1.12.3 | **Training Result Management** | 2.75d? | 2012-03-24 | 2012-03-28 |  | 0d |  | HRM_hk2.0 |  | 16h |
| 184 | 1.12.3.1 | Design Training Result Management | 0.5d? | 2012-03-24 | 2012-03-24 | 144FS+2d | 0d |  | HRM_hk2.0 | Quyet | 4h |
| 185 | 1.12.3.2 | Code Training Result Management | 1d? | 2012-03-27 | 2012-03-28 | 184 | 0d |  | HRM_hk2.0 | Quyet | 8h |
| 186 | 1.12.3.3 | Test Training Result Management | 0.5d? | 2012-03-28 | 2012-03-28 | 185 | 0d |  | HRM_hk2.0 | Tuong | 4h |
| 187 | 1.12.4 | **Facilitate Management** | 2.75d? | 2012-03-27 | 2012-03-30 |  | 1.25d | 0d | HRM_hk2.0 |  | 16h |
| 188 | 1.12.4.1 | Design Facilitate Management | 0.5d? | 2012-03-27 | 2012-03-27 | 157 | 1.25d | 0d | HRM_hk2.0 | Dang | 4h |
| 189 | 1.12.4.2 | Code Facilitate Management | 1d? | 2012-03-27 | 2012-03-28 | 188 | 1.75d | 1.25d | HRM_hk2.0 | Dang | 8h |
| 190 | 1.12.4.3 | Test Facilitate Management | 0.5d? | 2012-03-30 | 2012-03-30 | 189 | 1.25d |  | HRM_hk2.0 | Tuong | 4h |

| ID | WBS | Task | Duration | Start | Finish | Predecessors | Total slack | Free slack | Constraint | Calendar | Resources | Work |
| --- | --- | --- | --- | --- | --- | --- | --- | --- | --- | --- | --- | --- |
| 191 | 1.12.5 | **Union Management** | 2.75d? | 2012-04-04 | 2012-04-07 |  | 4d | 0d |  | HRM_hk2.0 |  | 16h |
| 192 | 1.12.5.1 | Design Union Management | 0.5d? | 2012-04-04 | 2012-04-04 | 143 | 4d | 0d |  | HRM_hk2.0 | Tung | 4h |
| 193 | 1.12.5.2 | Code Union Management | 1d? | 2012-04-04 | 2012-04-06 | 192 | 4.25d | 0.38d |  | HRM_hk2.0 | Tung | 8h |
| 194 | 1.12.5.3 | Test Union Management | 0.5d? | 2012-04-07 | 2012-04-07 | 193 | 4d |  |  | HRM_hk2.0 | Nhung | 4h |
| 195 | 1.12.6 | **Task NoteBook Management** | 2.75d? | 2012-04-04 | 2012-04-07 |  | 1.25d | 0d |  | HRM_hk2.0 |  | 16h |
| 196 | 1.12.6.1 | Design Task Note Book Management | 0.5d? | 2012-04-04 | 2012-04-04 | 143 | 1.25d | 0d |  | HRM_hk2.0 | Nhung | 4h |
| 197 | 1.12.6.2 | Code Task Note Book Management | 1d? | 2012-04-04 | 2012-04-06 | 196 | 1d | 0.38d |  | HRM_hk2.0 | Nhung | 8h |
| 198 | 1.12.6.3 | Test Task Note Book Management | 0.5d? | 2012-04-07 | 2012-04-07 | 197 | 1.25d |  |  | HRM_hk2.0 | Tung | 4h |
| 199 | 1.12.7 | **Training Course Management** | 3.25d | 2012-04-07 | 2012-04-13 |  | 1d | 0d |  | HRM_hk2.0 |  | 16h |
| 200 | 1.12.7.1 | Design Training Course Management | 0.5d | 2012-04-07 | 2012-04-10 | 195 | 1d | 0d | start no earlier than 2012-02-28 | HRM_hk2.0 | Nhung | 4h |
| 201 | 1.12.7.2 | Code Training Course Management | 1d | 2012-04-10 | 2012-04-11 | 200 | 1d | 0d |  | HRM_hk2.0 | Nhung | 8h |
| 202 | 1.12.7.3 | Test Training Course Management | 0.5d | 2012-04-11 | 2012-04-13 | 201 | 1d |  |  | HRM_hk2.0 | Quyet | 4h |
| 203 | 1.12.8 | **Internal Training Management** | 2.75d? | 2012-04-06 | 2012-04-10 |  | 1.25d | 0d |  | HRM_hk2.0 |  | 16h |
| 204 | 1.12.8.1 | Design Internal Training Management | 0.5d? | 2012-04-06 | 2012-04-06 | 143FS+1d | 1.25d | 0d |  | HRM_hk2.0 | Nguyen | 4h |
| 205 | 1.12.8.2 | Code Internal Training Management | 1d? | 2012-04-06 | 2012-04-07 | 204 | 1.75d | 0.25d |  | HRM_hk2.0 | Nguyen | 8h |
| 206 | 1.12.8.3 | Test Internal Training Management | 0.5d? | 2012-04-10 | 2012-04-10 | 205 | 1.25d |  |  | HRM_hk2.0 | Quyet | 4h |
| 207 | 1.12.9 | **Emulation Management** | 3d? | 2012-04-10 | 2012-04-14 |  | 1.5d | 1.19d |  | HRM_hk2.0 |  | 16h |
| 208 | 1.12.9.1 | Design Emulation Management | 0.5d? | 2012-04-10 | 2012-04-11 | 203 | 1.5d | 0d |  | HRM_hk2.0 | Nguyen | 4h |
| 209 | 1.12.9.2 | Code Emulation Management | 1d? | 2012-04-11 | 2012-04-13 | 208 | 1.25d | 0d |  | HRM_hk2.0 | Nguyen | 8h |
| 210 | 1.12.9.3 | Test Emulation Management | 0.5d? | 2012-04-13 | 2012-04-14 | 209 | 1.5d |  |  | HRM_hk2.0 | Dang | 4h |
| 211 | 1.12.10 | **Lecture Probation Management** | 2.75d? | 2012-04-13 | 2012-04-17 |  | 1d |  |  | HRM_hk2.0 |  | 16h |
| 212 | 1.12.10.1 | Design Lecture Probation Management | 0.5d? | 2012-04-13 | 2012-04-13 | 199 | 1d | 0.38d |  | HRM_hk2.0 | Nhung | 4h |
| 213 | 1.12.10.2 | Code Lecture Probation Management | 1d? | 2012-04-14 | 2012-04-17 | 212 | 1d | 0d |  | HRM_hk2.0 | Nhung | 8h |
| 214 | 1.12.10.3 | Test Lecture Probation Management | 0.5d? | 2012-04-17 | 2012-04-17 | 213 | 1d |  |  | HRM_hk2.0 | Tung | 4h |

| ID | WBS | Task | Duration | Start | Finish | Predecessors | Total slack | Free slack | Calendar | Resources | Work |
| --- | --- | --- | --- | --- | --- | --- | --- | --- | --- | --- | --- |
| 215 | 1.12.11 | **Mobilization Management** | 2.75d? | 2012-03-30 | 2012-04-03 |  | 4.5d | 0d | HRM_hk2.0 |  | 16h |
| 216 | 1.12.11.1 | Design Mobilization Management | 0.5d? | 2012-03-30 | 2012-03-30 | 179 | 4.5d | 0d | HRM_hk2.0 | Loc | 4h |
| 217 | 1.12.11.2 | Code Mobilization Management | 1d? | 2012-03-30 | 2012-03-31 | 216 | 4.5d | 0.25d | HRM_hk2.0 | Loc | 8h |
| 218 | 1.12.11.3 | Test Mobilization Management | 0.5d? | 2012-04-03 | 2012-04-03 | 217 | 4.5d |  | HRM_hk2.0 | Nhung | 4h |
| 219 | 1.12.12 | **Penalty Management** | 3d? | 2012-03-30 | 2012-04-04 |  | 1.5d | 0d | HRM_hk2.0 |  | 16h |
| 220 | 1.12.12.1 | Design Penalty Management | 0.5d? | 2012-03-30 | 2012-03-31 | 175FS+1d | 1.5d | 0d | HRM_hk2.0 | Tuong | 4h |
| 221 | 1.12.12.2 | Code Penalty Management | 1d? | 2012-03-31 | 2012-04-03 | 220 | 1.25d | 0d | HRM_hk2.0 | Tuong | 8h |
| 222 | 1.12.12.3 | Test Penalty Management | 0.5d? | 2012-04-03 | 2012-04-04 | 221 | 1.5d |  | HRM_hk2.0 | Loc | 4h |
| 223 | 1.12.13 | **Lecture Position Management** | 2.75d? | 2012-04-04 | 2012-04-07 | 219 | 1.5d | 0d | HRM_hk2.0 |  | 16h |
| 224 | 1.12.13.1 | Design Lecture Position Management | 0.5d? | 2012-04-04 | 2012-04-04 | 219 | 1.5d | 1.25d | HRM_hk2.0 | Tuong | 4h |
| 225 | 1.12.13.2 | Code Lecture Position Management | 1d? | 2012-04-06 | 2012-04-07 | 224 | 1.25d | 0d | HRM_hk2.0 | Tuong | 8h |
| 226 | 1.12.13.3 | Test Lecture Position Management | 0.5d? | 2012-04-07 | 2012-04-07 | 225 | 1.5d |  | HRM_hk2.0 | Loc | 4h |
| 227 | 1.12.14 | **Communist Party Management** | 3d? | 2012-04-10 | 2012-04-14 |  | 1.5d | 1.19d | HRM_hk2.0 |  | 16h |
| 228 | 1.12.14.1 | Design Communist Party Management | 0.5d? | 2012-04-10 | 2012-04-11 | 223FS+1d | 1.5d | 0d | HRM_hk2.0 | Tuong | 4h |
| 229 | 1.12.14.2 | Code Communist Party Management | 1d? | 2012-04-11 | 2012-04-13 | 228 | 1.25d | 0d | HRM_hk2.0 | Tuong | 8h |
| 230 | 1.12.14.3 | Test Communist Party Management | 0.5d? | 2012-04-13 | 2012-04-14 | 229 | 1.5d |  | HRM_hk2.0 | Loc | 4h |
| 231 | 1.12.15 | **Trade Union Management** | 3.25d? | 2012-04-07 | 2012-04-13 | 191 | 3.75d |  | HRM_hk2.0 |  | 16h |
| 232 | 1.12.15.1 | Design Trade Union Management | 0.5d? | 2012-04-07 | 2012-04-10 | 191 | 3.75d | 0d | HRM_hk2.0 | Tung | 4h |
| 233 | 1.12.15.2 | Code Trade Union Management | 1d? | 2012-04-10 | 2012-04-11 | 232 | 4.25d | 0d | HRM_hk2.0 | Tung | 8h |
| 234 | 1.12.15.3 | Test Trade Union Management | 0.5d? | 2012-04-11 | 2012-04-13 | 233 | 3.75d |  | HRM_hk2.0 | Nhung | 4h |
| 235 | 1.12.16 | **Syllabus Management** | 3d? | 2012-04-03 | 2012-04-07 |  | 4.5d | 0d | HRM_hk2.0 |  | 16h |
| 236 | 1.12.16.1 | Design Syllabus Management | 0.5d? | 2012-04-03 | 2012-04-04 | 215 | 4.5d | 0d | HRM_hk2.0 | Loc | 4h |
| 237 | 1.12.16.2 | Code Syllabus Management | 1d? | 2012-04-04 | 2012-04-06 | 236 | 4.5d | 0d | HRM_hk2.0 | Loc | 8h |
| 238 | 1.12.16.3 | Test Syllabus Management | 0.5d? | 2012-04-06 | 2012-04-07 | 237 | 4.5d |  | HRM_hk2.0 | Quyet | 4h |

| ID | WBS | Task | Duration | Start | Finish | Predecessors | Total slack | Free slack | Calendar | Resources | Work |
| --- | --- | --- | --- | --- | --- | --- | --- | --- | --- | --- | --- |
| 239 | 1.12.17 | **Science Research Management** | 2.75d? | 2012-04-07 | 2012-04-11 | 235 | 4.5d |  | HRM_hk2.0 |  | 16h |
| 240 | 1.12.17.1 | Design Science Research Management | 0.5d? | 2012-04-07 | 2012-04-07 | 235 | 4.5d | 0.25d | HRM_hk2.0 | Loc | 4h |
| 241 | 1.12.17.2 | Code Science Research Management | 1d? | 2012-04-10 | 2012-04-11 | 240 | 4.5d | 0d | HRM_hk2.0 | Loc | 8h |
| 242 | 1.12.17.3 | Test Science Research Management | 0.5d? | 2012-04-11 | 2012-04-11 | 241 | 4.5d |  | HRM_hk2.0 | Quyet | 4h |
| 243 | 1.12.18 | **Other Management** | 2.75d? | 2012-03-30 | 2012-04-03 |  | 0d |  | HRM_hk2.0 |  | 16h |
| 244 | 1.12.18.1 | Design Other Management | 0.5d? | 2012-03-30 | 2012-03-30 | 183 | 0d |  | HRM_hk2.0 | Quyet | 4h |
| 245 | 1.12.18.2 | Code Other Management | 1d? | 2012-03-30 | 2012-03-31 | 244 | 0d |  | HRM_hk2.0 | Quyet | 8h |
| 246 | 1.12.18.3 | Test Other Management | 0.5d? | 2012-04-03 | 2012-04-03 | 245 | 0d |  | HRM_hk2.0 | Tan | 4h |
| 247 | 1.12.19 | **Work Management** | 3d? | 2012-04-03 | 2012-04-07 |  | 0d |  | HRM_hk2.0 |  | 16h |
| 248 | 1.12.19.1 | Design Work Management | 0.5d? | 2012-04-03 | 2012-04-04 | 243 | 0d |  | HRM_hk2.0 | Quyet | 4h |
| 249 | 1.12.19.2 | Code Work Management | 1d? | 2012-04-04 | 2012-04-06 | 248 | 0d |  | HRM_hk2.0 | Quyet | 8h |
| 250 | 1.12.19.3 | Test Work Management | 0.5d? | 2012-04-06 | 2012-04-07 | 249 | 0d |  | HRM_hk2.0 | Tan | 4h |
| 251 | 1.12.20 | **Master Thesis Guideline Management** | 2.75d? | 2012-04-07 | 2012-04-11 |  | 0d |  | HRM_hk2.0 |  | 16h |
| 252 | 1.12.20.1 | Design Master Thesis Guideline Management | 0.5d? | 2012-04-07 | 2012-04-07 | 247 | 0d |  | HRM_hk2.0 | Quyet | 4h |
| 253 | 1.12.20.2 | Code Master Thesis Guideline Management | 1d? | 2012-04-10 | 2012-04-11 | 252 | 0d |  | HRM_hk2.0 | Quyet | 8h |
| 254 | 1.12.20.3 | Test Master Thesis Guideline Management | 0.5d? | 2012-04-11 | 2012-04-11 | 253 | 0d |  | HRM_hk2.0 | Tan | 4h |
| 255 | 1.12.21 | **Article Management** | 2.75d? | 2012-04-13 | 2012-04-17 |  | 0d |  | HRM_hk2.0 |  | 16h |
| 256 | 1.12.21.1 | Design Article Management | 0.5d? | 2012-04-13 | 2012-04-13 | 251 | 0d |  | HRM_hk2.0 | Quyet | 4h |
| 257 | 1.12.21.2 | Code Article Management | 1d? | 2012-04-13 | 2012-04-14 | 256 | 0d |  | HRM_hk2.0 | Quyet | 8h |
| 258 | 1.12.21.3 | Test Article Management | 0.5d? | 2012-04-17 | 2012-04-17 | 257 | 0d |  | HRM_hk2.0 | Tan | 4h |
| 259 | 1.12.22 | **Subject Management** | 3.5d? | 2012-03-30 | 2012-04-04 |  | 1.75d | 1.25d | HRM_hk2.0 |  | 20h |
| 260 | 1.12.22.1 | Design Subject Management | 1d? | 2012-03-30 | 2012-03-31 | 187 | 1.75d | 0.25d | HRM_hk2.0 | Dang | 8h |
| 261 | 1.12.22.2 | Code Subject Management | 1d? | 2012-04-03 | 2012-04-04 | 260 | 1.25d | 0d | HRM_hk2.0 | Dang | 8h |
| 262 | 1.12.22.3 | Test Subject Management | 0.5d? | 2012-04-04 | 2012-04-04 | 261 | 1.5d |  | HRM_hk2.0 | Tuong | 4h |

| ID | WBS | Task | Duration | Start | Finish | Predecessors | Total slack | Free slack | Constraint | Calendar | Resources | Work |
| --- | --- | --- | --- | --- | --- | --- | --- | --- | --- | --- | --- | --- |
| 263 | 1.12.23 | **Income Management** | 2.75d? | 2012-04-06 | 2012-04-10 |  | 1.25d | 0d |  | HRM_hk2.0 |  | 16h |
| 264 | 1.12.23.1 | Design Income Management | 0.5d? | 2012-04-06 | 2012-04-06 | 259 | 1.25d | 0d |  | HRM_hk2.0 | Dang | 4h |
| 265 | 1.12.23.2 | Code Income Management | 1d? | 2012-04-06 | 2012-04-07 | 264 | 1.75d | 0.25d |  | HRM_hk2.0 | Dang | 8h |
| 266 | 1.12.23.3 | Test Income Management | 0.5d? | 2012-04-10 | 2012-04-10 | 265 | 1.25d |  |  | HRM_hk2.0 | Tuong | 4h |
| 267 | 1.12.24 | **Salary Coefficient Management** | 3d? | 2012-04-10 | 2012-04-14 |  | 1.5d | 1.19d |  | HRM_hk2.0 |  | 16h |
| 268 | 1.12.24.1 | Design Salary Coefficient Management | 0.5d? | 2012-04-10 | 2012-04-11 | 263 | 1.5d | 0d |  | HRM_hk2.0 | Dang | 4h |
| 269 | 1.12.24.2 | Code Salary Coefficient Management | 1d? | 2012-04-11 | 2012-04-13 | 268 | 1.25d | 0d |  | HRM_hk2.0 | Dang | 8h |
| 270 | 1.12.24.3 | Test Salary Coefficient Management | 0.5d? | 2012-04-13 | 2012-04-14 | 269 | 1.5d |  |  | HRM_hk2.0 | Tuong | 4h |
| 271 | 1.12.25 | Integrate | 0.5d? | 2012-04-17 | 2012-04-18 | 164, 187, 207, 227, 255, 263, 267 | 0d |  |  | HRM_hk2.0 | Dang; Loc; Nguyen; Nhung; Quyet; Tan; Tung; Tuong | 32h |
| 272 | 1.12.26 | Testing | 0.5d? | 2012-04-18 | 2012-04-18 | 271 | 0d |  |  | HRM_hk2.0 | Tuong; Tung; Dang; Loc; Nguyen; Nhung; Quyet; Tan | 32h |
| 273 | 1.13 | **Increment 3: Report** | 10.25d | 2012-04-20 | 2012-05-05 |  | 0d |  |  | HRM_hk2.0 | 143 | 125h |
| 274 | 1.13.1 | **Report Management** | 7.25d | 2012-04-20 | 2012-05-01 |  | 0d |  |  | HRM_hk2.0 |  | 40h |
| 275 | 1.13.1.1 | Design Report | 1d | 2012-04-20 | 2012-04-21 | 174 | 0d |  |  | HRM_hk2.0 | Loc | 8h |
| 276 | 1.13.1.2 | Code Report | 3d | 2012-04-21 | 2012-04-28 | 258, 272, 275 | 0d |  |  | HRM_hk2.0 | Tan | 24h |
| 277 | 1.13.1.3 | Test Report | 1d | 2012-04-28 | 2012-05-01 | 276 | 0d |  |  | HRM_hk2.0 | Dang | 8h |
| 278 | 1.13.2 | Integrate | 1d | 2012-05-01 | 2012-05-02 | 277 | 0d |  |  | HRM_hk2.0 | Tan | 8h |
| 279 | 1.13.3 | Test | 1d | 2012-05-04 | 2012-05-05 | 278 | 0d |  |  | HRM_hk2.0 | Dang; Tung | 16h |
| 280 | 1.14 | Conduct System test | 2d | 2012-05-05 | 2012-05-09 | 273 | 0d |  |  | HRM_hk2.0 | Dang; Loc; Nguyen; Nhung; Quyet; Tan; Tung; Tuong | 128h |
| 281 | 1.15 | Conduct Acceptance test | 2d | 2012-05-11 | 2012-05-15 | 280 | 0d |  |  | HRM_hk2.0 | Dang; Loc; Nguyen; Nhung; Quyet; Tan; Tung; Tuong | 128h |
| 282 | 1.16 | Translate Concept Doc | 10d | 2012-01-21 | 2012-02-14 | 87 | 55.19d |  |  |  | Nguyen | 80h |
| 283 | 1.17 | Deployment | 2d | 2012-05-15 | 2012-05-19 | 281, 282, 133 | 0d |  | finish no earlier than 2012-03-07 | HRM_hk2.0 | Dang; Loc; Nguyen; Nhung; Quyet; Tan; Tung; Tuong | 120h |
| 284 | 1.18 | Deliver to customer | 3d | 2012-05-19 | 2012-05-26 | 283 | 0d |  |  | HRM_hk2.0 | Dang; Loc; Nguyen; Nhung; Quyet; Tan; Tung; Tuong | 180h |
| 285 | 1.19 | Maintaining | 1d | 2012-05-26 | 2012-05-29 | 284 | 0d |  |  | HRM_hk2.0 | Dang; Loc; Nguyen; Nhung; Quyet; Tan; Tung; Tuong | 64h |
